# Property & Casualty Insurance Claim Processing

How a schedule from MS Project changed from version to version. A marks actual dates.

## Version 1 (saved 2024-07-18, file Insurance Processing Schedule Baseline.mpp)

Note of the change: adding semester 4

| ID | WBS | Task | Duration | Start | Finish | Predecessors | Total float |
| --- | --- | --- | --- | --- | --- | --- | --- |
| 1 |  | Read the note for an explanation of the purpose of this template | 0d | 2019-02-04 08:00 | 2019-02-04 08:00 |  | 0d |
| 2 |  | Claim is registered or customer notifies us of potential claim | 2h | 2019-02-04 08:00 | 2019-02-04 10:00 | 1 | 0d |
| 3 | 3 | **Enter Originating Customer Claim into System** | 0.31d | 2019-02-04 10:00 | 2019-02-04 13:30 |  | 0d |
| 4 |  | Case identifier assigned | 0d | 2019-02-04 10:00 | 2019-02-04 10:00 | 2 | 0d |
| 5 |  | Claim information is taken | 2h | 2019-02-04 10:00 | 2019-02-04 12:00 | 4 | 0d |
| 6 |  | Claimant is directed to estimator | 0.5h | 2019-02-04 13:00 | 2019-02-04 13:30 | 5 | 0d |
| 7 |  | Adjuster is assigned | 1d | 2019-02-04 13:30 | 2019-02-05 13:30 | 6 | 0d |
| 8 |  | Adjuster checks "unrepaired damage" history | 1h | 2019-02-12 13:30 | 2019-02-12 14:30 | 7 | 10.88d |
| 9 |  | Customer delivers auto to estimator | 2d | 2019-02-12 14:30 | 2019-02-14 14:30 | 8 | 10.88d |
| 10 |  | Estimator reviews damage | 2h | 2019-02-14 14:30 | 2019-02-14 16:30 | 9 | 10.88d |
| 11 |  | Estimate reviewed/approved by adjuster | 1h | 2019-02-14 16:30 | 2019-02-15 08:30 | 10 | 10.88d |
| 12 | 9 | **If Estimate Does Not Exceed Deductible** | 11.75d | 2019-02-15 08:30 | 2019-03-04 15:30 |  | 10.88d |
| 13 |  | Adjuster suggests possible repair locations | 0.5h | 2019-02-15 08:30 | 2019-02-15 09:00 | 11 | 10.88d |
| 14 |  | Claim information and estimate is registered with "unrepaired damage" group | 1h | 2019-02-15 09:00 | 2019-02-15 10:00 | 13 | 10.88d |
| 15 | 9.3 | **If "Hidden Damage" Is Encountered** | 1.5d | 2019-02-15 10:00 | 2019-02-18 15:00 |  | 10.88d |
| 16 |  | Repairer notifies adjuster | 1d | 2019-02-15 10:00 | 2019-02-18 10:00 | 14 | 10.88d |
| 17 |  | Adjuster determines if new estimate exceeds deductible | 0.5d | 2019-02-18 10:00 | 2019-02-18 15:00 | 16 | 10.88d |
| 18 |  | Repair performed (and paid for by customer) | 10d | 2019-02-18 15:00 | 2019-03-04 15:00 | 17 | 25d |
| 19 |  | Customer notifies us of repairs complete (and amount) | 0.5h | 2019-03-04 15:00 | 2019-03-04 15:30 | 18 | 25d |
| 20 |  | Customer [Repairs] Complete | 0d | 2019-03-04 15:30 | 2019-03-04 15:30 | 19 | 25d |
| 21 | 10 | **If Estimate Exceeds Deductible** | 14.19d | 2019-03-04 15:00 | 2019-03-22 16:30 |  | 10.88d |
| 22 | 10.1 | **If Auto Is Considered "Unrecoverable"** | 1d | 2019-03-04 16:00 | 2019-03-05 16:00 |  | 23.94d |
| 23 |  | Issue amount (less the deductible) less salvage revenue | 1d | 2019-03-04 16:00 | 2019-03-05 16:00 | 11, 17 | 23.94d |
| 24 |  | Customer [Repair] closed | 0d | 2019-03-05 16:00 | 2019-03-05 16:00 | 23 | 23.94d |
| 25 | 10.2 | **If Repairs Are Performed (That Exceed the Deductible)** | 14.19d | 2019-03-04 15:00 | 2019-03-22 16:30 |  | 10.88d |
| 26 |  | Repairs performed | 10d | 2019-03-04 15:00 | 2019-03-18 15:00 | 11, 17 | 10.88d |
| 27 |  | Customer billed for (and pays) any remainder on the deductible | 0.5h | 2019-03-18 15:00 | 2019-03-18 15:30 | 26 | 10.88d |
| 28 |  | Receive repair invoice (from repairer) | 0d | 2019-03-21 15:30 | 2019-03-21 15:30 | 27FS+3d | 10.88d |
| 29 |  | Adjuster approves payment to the repairer | 1d | 2019-03-21 15:30 | 2019-03-22 15:30 | 28 | 10.88d |
| 30 |  | Repair complete information is registered with "unrepaired damage" group | 1h | 2019-03-22 15:30 | 2019-03-22 16:30 | 29 | 10.88d |
| 31 |  | Customer [repair] claim on the incident is closed | 0d | 2019-03-22 16:30 | 2019-03-22 16:30 | 30 | 10.88d |
| 32 | 11 | **If Claim Involves Injury** | 7.12d | 2019-02-04 13:30 | 2019-02-13 14:30 |  | 38.12d |
| 33 |  | If this is a 'No Fault' state or there is a medical rider, pay up to injury amount | 1d | 2019-02-12 14:30 | 2019-02-13 14:30 | 2 | 38.12d |
| 34 |  | If "Fault" state, and customer injured external claimant, flag for receipt of potential litigation | 1h | 2019-02-04 13:30 | 2019-02-04 14:30 | 2 | 45.12d |
| 35 |  | Customer injury claim closed | 0d | 2019-02-13 14:30 | 2019-02-13 14:30 | 33, 34 | 38.12d |
| 36 | 12 | **For Each Claimant (If Multi-Claimant Incident)** | 44.25d | 2019-02-05 13:30 | 2019-04-08 15:30 |  | 0d |
| 37 |  | Claimant files claim | 0d | 2019-02-05 13:30 | 2019-02-05 13:30 | 7 | 0d |
| 38 |  | Adjuster checks "unrepaired damage" history | 1h | 2019-02-12 13:30 | 2019-02-12 14:30 | 37 | 0d |
| 39 |  | Estimator reviews damage | 2h | 2019-02-12 14:30 | 2019-02-12 16:30 | 38 | 0d |
| 40 |  | Estimate reviewed by adjuster | 1h | 2019-03-04 15:00 | 2019-03-04 16:00 | 39 | 0d |
| 41 |  | Repair performed | 10d | 2019-03-18 15:30 | 2019-04-01 15:30 | 40 | 0d |
| 42 |  | Receive repair invoice (from repairer) | 0d | 2019-04-04 15:30 | 2019-04-04 15:30 | 41FS+3d | 0d |
| 43 |  | Pay repairer | 1d | 2019-04-04 15:30 | 2019-04-05 15:30 | 42 | 0d |
| 44 |  | Finalize incident entry in system | 1d | 2019-04-05 15:30 | 2019-04-08 15:30 | 43 | 0d |
| 45 |  | This claimant [repair] claim closed | 0d | 2019-04-08 15:30 | 2019-04-08 15:30 | 44 | 0d |
| 46 | 12.10 | **If Claim Involves Injury** | 25.31d | 2019-02-05 13:30 | 2019-03-12 16:00 |  | 18.94d |
| 47 |  | Negotiate injury resolution | 5d | 2019-02-05 13:30 | 2019-02-12 13:30 | 37 | 18.94d |
| 48 |  | Issue payment | 5d | 2019-03-05 16:00 | 2019-03-12 16:00 | 47 | 18.94d |
| 49 |  | This claimant [injury] claim closed | 0d | 2019-03-12 16:00 | 2019-03-12 16:00 | 48 | 18.94d |
| 50 | 13 | **Subrogation Analysis** | 1.5d | 2019-04-08 15:30 | 2019-04-10 10:30 |  | 0d |
| 51 |  | Examine the case for applicability of subrogation process | 1d | 2019-04-08 15:30 | 2019-04-09 15:30 | 20, 24, 31, 35, 45, 49 | 0d |
| 52 |  | If subrogation is applicable, initiate subrogation process | 4h | 2019-04-09 15:30 | 2019-04-10 10:30 | 51 | 0d |
| 53 |  | Incident/Originating Claim Closed | 0d | 2019-04-10 10:30 | 2019-04-10 10:30 | 52 | 0d |

## Version 2 (data date 2019-03-07, saved 2024-07-18, file Insurance Processing Schedule Tracked.mpp)

Note of the change: adding semester 4

Last finish stays 2019-04-10. Complete tasks 0 → 27.

Changed:

| ID | Task | Start | Finish | Complete | Total float |
| --- | --- | --- | --- | --- | --- |
| 1 | Read the note for an explanation of the purpose of this template | 2019-02-04 08:00 A | 2019-02-04 08:00 A | 0% → 100% | 0d → none |
| 2 | Claim is registered or customer notifies us of potential claim | 2019-02-04 08:00 A | 2019-02-04 10:00 A | 0% → 100% | 0d → none |
| 3 | **Enter Originating Customer Claim into System** | 2019-02-04 10:00 A | 2019-02-04 13:30 A | 0% → 100% | 0d → none |
| 4 | Case identifier assigned | 2019-02-04 10:00 A | 2019-02-04 10:00 A | 0% → 100% | 0d → none |
| 5 | Claim information is taken | 2019-02-04 10:00 A | 2019-02-04 12:00 A | 0% → 100% | 0d → none |
| 6 | Claimant is directed to estimator | 2019-02-04 13:00 A | 2019-02-04 13:30 A | 0% → 100% | 0d → none |
| 7 | Adjuster is assigned | 2019-02-04 13:30 A | 2019-02-05 13:30 A | 0% → 100% | 0d → none |
| 8 | Adjuster checks "unrepaired damage" history | 2019-02-12 13:30 A | 2019-02-12 14:30 A | 0% → 100% | 10.88d → none |
| 9 | Customer delivers auto to estimator | 2019-02-12 14:30 A | 2019-02-14 14:30 A | 0% → 100% | 10.88d → none |
| 10 | Estimator reviews damage | 2019-02-14 14:30 A | 2019-02-14 16:30 A | 0% → 100% | 10.88d → none |
| 11 | Estimate reviewed/approved by adjuster | 2019-02-14 16:30 A | 2019-02-15 08:30 A | 0% → 100% | 10.88d → none |
| 12 | **If Estimate Does Not Exceed Deductible** | 2019-02-15 08:30 A | 2019-03-04 15:30 A | 0% → 100% | 10.88d → none |
| 13 | Adjuster suggests possible repair locations | 2019-02-15 08:30 A | 2019-02-15 09:00 A | 0% → 100% | 10.88d → none |
| 14 | Claim information and estimate is registered with "unrepaired damage" group | 2019-02-15 09:00 A | 2019-02-15 10:00 A | 0% → 100% | 10.88d → none |
| 15 | **If "Hidden Damage" Is Encountered** | 2019-02-15 10:00 A | 2019-02-18 15:00 A | 0% → 100% | 10.88d → none |
| 16 | Repairer notifies adjuster | 2019-02-15 10:00 A | 2019-02-18 10:00 A | 0% → 100% | 10.88d → none |
| 17 | Adjuster determines if new estimate exceeds deductible | 2019-02-18 10:00 A | 2019-02-18 15:00 A | 0% → 100% | 10.88d → none |
| 18 | Repair performed (and paid for by customer) | 2019-02-18 15:00 A | 2019-03-04 15:00 A | 0% → 100% | 25d → none |
| 19 | Customer notifies us of repairs complete (and amount) | 2019-03-04 15:00 A | 2019-03-04 15:30 A | 0% → 100% | 25d → none |
| 20 | Customer [Repairs] Complete | 2019-03-04 15:30 A | 2019-03-04 15:30 A | 0% → 100% | 25d → none |
| 21 | **If Estimate Exceeds Deductible** | 2019-03-04 15:00 A |  | 0% → 35% |  |
| 22 | **If Auto Is Considered "Unrecoverable"** | 2019-03-04 16:00 A | 2019-03-05 16:00 A | 0% → 100% | 23.94d → none |
| 23 | Issue amount (less the deductible) less salvage revenue | 2019-03-04 16:00 A | 2019-03-05 16:00 A | 0% → 100% | 23.94d → none |
| 24 | Customer [Repair] closed | 2019-03-05 16:00 A | 2019-03-05 16:00 A | 0% → 100% | 23.94d → none |
| 25 | **If Repairs Are Performed (That Exceed the Deductible)** | 2019-03-04 15:00 A |  | 0% → 29% |  |
| 26 | Repairs performed | 2019-03-04 15:00 A |  | 0% → 33% |  |
| 32 | **If Claim Involves Injury** | 2019-02-04 13:30 A | 2019-02-13 14:30 A | 0% → 100% | 38.12d → none |
| 33 | If this is a 'No Fault' state or there is a medical rider, pay up to injury amount | 2019-02-12 14:30 A | 2019-02-13 14:30 A | 0% → 100% | 38.12d → none |
| 34 | If "Fault" state, and customer injured external claimant, flag for receipt of potential litigation | 2019-02-04 13:30 A | 2019-02-04 14:30 A | 0% → 100% | 45.12d → none |
| 35 | Customer injury claim closed | 2019-02-13 14:30 A | 2019-02-13 14:30 A | 0% → 100% | 38.12d → none |
| 36 | **For Each Claimant (If Multi-Claimant Incident)** | 2019-02-05 13:30 A |  | 0% → 34% |  |
| 37 | Claimant files claim | 2019-02-05 13:30 A | 2019-02-05 13:30 A | 0% → 100% | 0d → none |
| 38 | Adjuster checks "unrepaired damage" history | 2019-02-12 13:30 A | 2019-02-12 14:30 A | 0% → 100% | 0d → none |
| 39 | Estimator reviews damage | 2019-02-12 14:30 A | 2019-02-12 16:30 A | 0% → 100% | 0d → none |
| 40 | Estimate reviewed by adjuster | 2019-03-04 15:00 A | 2019-03-04 16:00 A | 0% → 100% | 0d → none |
| 46 | **If Claim Involves Injury** | 2019-02-05 13:30 A |  | 0% → 71% |  |
| 47 | Negotiate injury resolution | 2019-02-05 13:30 A | 2019-02-12 13:30 A | 0% → 100% | 18.94d → none |
| 48 | Issue payment | 2019-03-05 16:00 A |  | 0% → 43% |  |
